# Project 0.1

How a schedule from MS Project changed from version to version. A marks actual dates.

## Version 1 (saved 2017-08-25, file Project v0.2.mpp)

Note of the change: ISW2 Final project

| ID | WBS | Task | Duration | Start | Finish | Predecessors | Complete | Total float | Constraint |
| --- | --- | --- | --- | --- | --- | --- | --- | --- | --- |
| 1 | 1 | **Sistema de Gestión de Vehículos Pesados para la Construcción y Mantenimiento de Postes Eléctricos** | 23d? | 2017-08-02 A | 2017-08-31 |  | 60% | 0d |  |
| 2 | 1.1 | **Gestión de Proyecto** | 23d? | 2017-08-02 A | 2017-08-31 |  | 84% | 0d |  |
| 3 | 1.1.1 | **Planeación del Proyecto** | 23d | 2017-08-02 A | 2017-08-31 A |  | 100% |  |  |
| 4 | 1.1.1.1 | **Acta de Reunión 1** | 0d | 2017-08-02 A | 2017-08-02 A |  | 100% |  |  |
| 5 |  | Evaluar los contactos y selección de empresa | 0d | 2017-08-02 A | 2017-08-02 A |  | 100% |  |  |
| 6 |  | Asignar Roles del Equipo de Trabajo | 0d | 2017-08-02 A | 2017-08-02 A | 5 | 100% |  |  |
| 7 | 1.1.1.2 | **Acta de Reunión 2** | 0d | 2017-08-03 A | 2017-08-03 A |  | 100% |  |  |
| 8 |  | Primera Reunión con el cliente | 0d | 2017-08-03 A | 2017-08-03 A | 4 | 100% |  | start no earlier than 2017-08-03 |
| 9 |  | Analizar el proceso de negocio | 0d | 2017-08-03 A | 2017-08-03 A | 8 | 100% |  |  |
| 10 |  | Seleccionar y analizar proceso crítico | 0d | 2017-08-03 A | 2017-08-03 A | 9 | 100% |  |  |
| 11 | 1.1.1.3 | **Acta de Reunión 3** | 0d | 2017-08-05 A | 2017-08-05 A |  | 100% |  |  |
| 12 |  | Crear Repositorio y Backup del Repositorio del Proyecto | 0d | 2017-08-05 A | 2017-08-05 A | 7 | 100% |  | start no earlier than 2017-08-05 |
| 13 |  | Elaborar documento del Repositorio del Proyecto | 0d | 2017-08-05 A | 2017-08-05 A | 12 | 100% |  | start no earlier than 2017-08-05 |
| 14 |  | Verificar documento del Repositorio del Proyecto | 0d | 2017-08-05 A | 2017-08-05 A | 13 | 100% |  | start no earlier than 2017-08-05 |
| 15 |  | Definir Alcance del Proyecto | 0d | 2017-08-05 A | 2017-08-05 A | 14 | 100% |  |  |
| 16 |  | Estructurar Ms Project | 0d | 2017-08-06 A | 2017-08-06 A | 7 | 100% |  | start no earlier than 2017-08-06 |
| 17 | 1.1.1.5 | **Elaborar Enunciado de Trabajo** | 10d | 2017-08-07 A | 2017-08-18 A |  | 100% |  |  |
| 18 |  | Elaborar Enunciado de Trabajo | 2d | 2017-08-07 A | 2017-08-08 A | 7, 16 | 100% |  | start no earlier than 2017-08-07 |
| 19 |  | Verificar Enunciado de Trabajo | 1d | 2017-08-09 A | 2017-08-09 A | 18 | 100% |  | start no earlier than 2017-08-09 |
| 20 |  | Actualizar Enunciado de Trabajo | 2d | 2017-08-16 A | 2017-08-17 A | 19 | 100% |  | start no earlier than 2017-08-16 |
| 21 |  | Verificar Actualización de Enunciado de Trabajo | 1d | 2017-08-18 A | 2017-08-18 A | 20 | 100% |  |  |
| 22 | 1.1.1.6 | **Acta de Reunion 4** | 0d | 2017-08-18 A | 2017-08-18 A |  | 100% |  |  |
| 23 |  | Asignar tareas según roles | 0d | 2017-08-18 A | 2017-08-18 A |  | 100% |  | start no earlier than 2017-08-18 |
| 24 |  | Elaborar el modelo de caso de uso | 0d | 2017-08-18 A | 2017-08-18 A |  | 100% |  | start no earlier than 2017-08-18 |
| 25 |  | Verificación y actualización del Ms Project | 0d | 2017-08-18 A | 2017-08-18 A | 11 | 100% |  | start no earlier than 2017-08-18 |
| 26 |  | Verificar Enunciado de Trabajo | 0d | 2017-08-18 A | 2017-08-18 A | 11 | 100% |  | start no earlier than 2017-08-18 |
| 27 | 1.1.1.7 | **Acta de Reunion 5** | 0d | 2017-08-31 A | 2017-08-31 A |  | 100% |  |  |
| 28 |  | Validar enunciado de trabajo | 0d | 2017-08-31 A | 2017-08-31 A | 17 | 100% |  | start no earlier than 2017-08-31 |
| 29 |  | Validar plan de proyecto | 0d | 2017-08-31 A | 2017-08-31 A | 31 | 100% |  | start no earlier than 2017-08-31 |
| 30 | 1.1.2 | **Ejecución del Plan de Proyecto** | 4.32d | 2017-08-21 A | 2017-08-25 |  | 85% | 3.25d |  |
| 31 | 1.1.2.1 | **Elaborar Plan de Proyecto** | 4.32d | 2017-08-21 A | 2017-08-25 |  | 85% | 3.25d |  |
| 32 |  | Elaborar Plan de Proyecto | 4d | 2017-08-21 A | 2017-08-23 |  | 85% | 5.25d | finish no earlier than 2017-08-23 |
| 33 |  | Verificar Plan de Proyecto | 0d | 2017-08-25 | 2017-08-25 | 32 |  | 3.25d | finish no earlier than 2017-08-25 |
| 34 |  | Evaluación y Control del Proyecto | 0.62d? | 2017-08-02 | 2017-08-02 |  |  |  |  |
| 35 |  | Cierre del Proyecto | 0.62d? | 2017-08-02 | 2017-08-02 |  |  |  |  |
| 36 | 1.2 | **Implementacion de Software** | 5d? | 2017-08-19 A | 2017-08-26 |  | 30% | 3d |  |
| 37 | 1.2.1 | **Inicio de Implementación de Software** | 0d | 2017-08-25 | 2017-08-25 |  |  | 3.25d |  |
| 38 |  | Revisar Plan de Proyecto | 0d | 2017-08-25 | 2017-08-25 | 31 |  | 3.25d | start no earlier than 2017-08-24 |
| 39 |  | Asignar Roles de acuerdo al Plan de Proyecto | 0d | 2017-08-25 | 2017-08-25 | 38 |  | 3.25d | start no earlier than 2017-08-25 |
| 40 | 1.2.2 | **Análisis de Requisitos de Software** | 5d | 2017-08-19 A | 2017-08-26 |  | 45% | 3d |  |
| 41 | 1.2.2.1 | **Elaborar el MCU** | 2.75d | 2017-08-19 A | 2017-08-23 A |  | 100% |  |  |
| 42 |  | Diseñar y Estructurar el Modelo de Casos de Uso | 1d | 2017-08-19 A | 2017-08-23 A | 17, 31 | 100% |  | finish no earlier than 2017-08-23 |
| 43 | 1.2.2.2 | **Elaborar Documento Especificación de Casos de Uso** | 2d | 2017-08-24 A | 2017-08-25 |  | 28% | 0d |  |
| 44 |  | Elaborar la Especificación de los Casos de Uso | 3d | 2017-08-24 A | 2017-08-25 | 42, 46 | 28% | 0d |  |
| 45 | 1.2.2.3 | **Elaborar Especificación de Requisitos** | 2d | 2017-08-24 A | 2017-08-26 |  | 42% | 3d |  |
| 46 |  | Elaborar Priorización de Casos de Uso | 0d | 2017-08-24 A | 2017-08-24 A | 42 | 100% |  |  |
| 47 |  | Elaborar Documento de SRS | 2d | 2017-08-24 A | 2017-08-26 | 44 | 42% | 3d |  |
| 48 |  | Verificar Documento de SRS | 0d | 2017-08-25 A | 2017-08-25 A | 47 | 100% |  |  |
| 49 | 1.2.3 | **Arquitectura y Diseño Detallado de Software** | 0.94d | 2017-08-25 | 2017-08-25 |  |  | 3.06d |  |
| 50 |  | Elaborar Registro de Trazabilidad | 1d | 2017-08-25 | 2017-08-25 |  |  | 3.06d | start no earlier than 2017-08-25 |
| 51 |  | Construcción de Software | 0.62d? | 2017-08-19 | 2017-08-19 |  |  |  |  |
| 52 |  | Integración y Pruebas de Software | 0.62d? | 2017-08-19 | 2017-08-19 |  |  |  |  |
| 53 |  | Entrega de Productos | 0.62d? | 2017-08-19 | 2017-08-19 |  |  |  |  |

## Version 2 (saved 2017-08-25, file Project v0.3.mpp)

Note of the change: ISW2 Final project

Last finish stays 2017-08-31.

Added:

| ID | Task | Duration | Start | Finish | Constraint | Resources |
| --- | --- | --- | --- | --- | --- | --- |
| 35 | Elaborar Documento Reporte de Avances | 0d | 2017-08-24 | 2017-08-24 | start no earlier than 2017-08-24 | GESTOR DE PROYECTO |

Changed:

| ID | Task | Start | Finish | Duration | Complete | Total float | Other |
| --- | --- | --- | --- | --- | --- | --- | --- |
| 1 | **Sistema de Gestión de Vehículos Pesados** |  |  |  |  |  | was named Sistema de Gestión de Vehículos Pesados para la Construcción y Mantenimiento de Postes Eléctricos |
| 2 | **Gestión de Proyecto** |  |  |  | 84% → 87% |  |  |
| 17 | **Elaborar Enunciado de Trabajo** |  | 2017-08-18 A → 2017-08-23 A (+5d) | 10d → 12d |  |  |  |
| 21 | Verificar Actualización de Enunciado de Trabajo | 2017-08-18 A → 2017-08-23 A (+5d) | 2017-08-18 A → 2017-08-23 A (+5d) | 1d → 0d |  |  |  |
| 34 | **Evaluación y Control del Proyecto** | 2017-08-02 → 2017-08-24 (+22d) | 2017-08-02 → 2017-08-24 (+22d) | 0.62d? → 0d |  | none → 5d |  |

## Version 3 (saved 2017-08-30, file Project v0.4.mpp)

Note of the change: ISW2 Final project

Last finish stays 2017-08-31.

Added:

| ID | Task | Duration | Start | Finish | Predecessors | Constraint | Resources |
| --- | --- | --- | --- | --- | --- | --- | --- |
| 34 | Validar Plan de Proyecto y Enunciado de Trabajo | 0d | 2017-08-31 | 2017-08-31 | 21, 33 | start no earlier than 2017-08-31 | CLIENTE; GESTOR DE PROYECTO |
| 47 | Verificar Especificación de Casos de Uso | 0d | 2017-08-25 | 2017-08-25 | 46 | start no earlier than 2017-08-25 | CLIENTE; GESTOR DE PROYECTO |
| 48 | Actualizar Especificación de Casos de Uso | 2d | 2017-08-29 | 2017-08-30 | 47 | start no earlier than 2017-08-29 | ANALISTA; DISEÑADOR |
| 49 | Verificar Actualización de ECUs | 0d | 2017-08-31 | 2017-08-31 | 48 | start no earlier than 2017-08-31 | CLIENTE; GESTOR DE PROYECTO |
| 50 | Validar Especificación de Casos de Uso | 0d | 2017-08-31 | 2017-08-31 | 49 | start no earlier than 2017-08-02 | CLIENTE; GESTOR DE PROYECTO |
| 55 | Actualizar Documento SRS | 2d | 2017-08-29 | 2017-08-30 | 54 | start no earlier than 2017-08-29 | ANALISTA; DISEÑADOR |
| 56 | Verificar Actualización de Documento SRS | 0d | 2017-08-31 | 2017-08-31 | 55 | start no earlier than 2017-08-31 | CLIENTE; GESTOR DE PROYECTO |
| 57 | Validar Documento de SRS | 0d | 2017-08-31 | 2017-08-31 | 56 |  | CLIENTE; GESTOR DE PROYECTO |

Changed:

| ID | Task | Start | Finish | Duration | Complete | Total float | Predecessors | Other |
| --- | --- | --- | --- | --- | --- | --- | --- | --- |
| 1 | **Sistema de Gestión de Vehículos Pesados** |  |  | 23d? → 23.94d? | 60% → 49% |  |  |  |
| 19 | Verificar Enunciado de Trabajo |  |  |  |  |  |  | resources GESTOR DE PROYECTO → GESTOR DE PROYECTO; CLIENTE |
| 21 | Verificar Actualización de Enunciado de Trabajo |  |  |  |  |  |  | resources GESTOR DE PROYECTO → GESTOR DE PROYECTO; CLIENTE |
| 23 | Asignar tareas según roles |  |  |  |  |  | none → 16 |  |
| 24 | Elaborar el modelo de caso de uso |  |  |  |  |  | none → 17 |  |
| 32 | Elaborar Plan de Proyecto |  |  |  |  | 5.25d → 6.19d | none → 17 |  |
| 33 | Verificar Plan de Proyecto |  |  |  |  | 3.25d → 4.19d |  | resources GESTOR DE PROYECTO → GESTOR DE PROYECTO; CLIENTE |
| 38 | **Implementacion de Software** |  | 2017-08-26 → 2017-08-31 (+5d) | 5d? → 8.94d? | 30% → 21% | 3d → 0d |  |  |
| 40 | Revisar Plan de Proyecto |  |  |  |  | 3.25d → 4.19d |  | resources none → EQUIPO DE TRABAJO |
| 41 | Asignar Roles de acuerdo al Plan de Proyecto |  |  |  |  | 3.25d → 4.19d |  | resources none → GESTOR DE PROYECTO |
| 42 | **Análisis de Requisitos de Software** |  | 2017-08-26 → 2017-08-31 (+5d) | 5d → 8d | 45% → 27% | 3d → 0.94d |  |  |
| 45 | **Elaborar Documento Especificación de Casos de Uso** |  | 2017-08-25 → 2017-08-31 (+6d) | 2d → 5d | 28% → 17% | 0d → 0.94d |  |  |
| 46 | Elaborar la Especificación de Casos de Uso |  |  |  |  |  |  | was named Elaborar la Especificación de los Casos de Uso; resources ANALISTA → ANALISTA; DISEÑADOR |
| 51 | **Elaborar Especificación de Requisitos** |  | 2017-08-26 → 2017-08-31 (+5d) | 2d → 5d | 42% → 21% | 3d → 0d |  |  |
| 58 | **Arquitectura y Diseño Detallado de Software** | 2017-08-25 → 2017-08-31 (+6d) | 2017-08-25 → 2017-08-31 (+6d) |  |  | 3.06d → 0d |  |  |
| 59 | Elaborar Registro de Trazabilidad | 2017-08-25 → 2017-08-31 (+6d) | 2017-08-25 → 2017-08-31 (+6d) |  |  | 3.06d → 0d | none → 51 |  |

## Version 4 (saved 2017-09-02, file Project v0.5.mpp)

Note of the change: ISW2 Final project

Last finish stays 2017-08-31. Complete tasks 23 → 38.

Changed:

| ID | Task | Start | Finish | Complete | Total float |
| --- | --- | --- | --- | --- | --- |
| 1 | **Sistema de Gestión de Vehículos Pesados** |  |  | 49% → 87% |  |
| 2 | **Gestión de Proyecto** |  |  | 87% → 94% | 0.94d → 0d |
| 30 | **Ejecución del Plan de Proyecto** |  | 2017-08-25 A | 85% → 100% | 4.19d → none |
| 31 | **Elaborar Plan de Proyecto** |  | 2017-08-25 A | 85% → 100% | 4.19d → none |
| 32 | Elaborar Plan de Proyecto |  | 2017-08-23 A | 85% → 100% | 6.19d → none |
| 33 | Verificar Plan de Proyecto | 2017-08-25 A | 2017-08-25 A | 0% → 100% | 4.19d → none |
| 34 | Validar Plan de Proyecto y Enunciado de Trabajo | 2017-08-31 A | 2017-08-31 A | 0% → 100% | 0.94d → none |
| 35 | **Evaluación y Control del Proyecto** | 2017-08-24 A | 2017-08-24 A | 0% → 100% | 5.94d → none |
| 36 | Elaborar Documento Reporte de Avances | 2017-08-24 A | 2017-08-24 A | 0% → 100% | 5.94d → none |
| 38 | **Implementacion de Software** |  |  | 21% → 82% |  |
| 39 | **Inicio de Implementación de Software** | 2017-08-25 A | 2017-08-25 A | 0% → 100% | 4.19d → none |
| 40 | Revisar Plan de Proyecto | 2017-08-25 A | 2017-08-25 A | 0% → 100% | 4.19d → none |
| 41 | Asignar Roles de acuerdo al Plan de Proyecto | 2017-08-25 A | 2017-08-25 A | 0% → 100% | 4.19d → none |
| 42 | **Análisis de Requisitos de Software** |  | 2017-08-31 A | 27% → 100% | 0.94d → none |
| 45 | **Elaborar Documento Especificación de Casos de Uso** |  | 2017-08-31 A | 17% → 100% | 0.94d → none |
| 46 | Elaborar la Especificación de Casos de Uso |  | 2017-08-25 A | 28% → 100% | 0d → none |
| 47 | Verificar Especificación de Casos de Uso | 2017-08-25 A | 2017-08-25 A | 0% → 100% | 2.75d → none |
| 48 | Actualizar Especificación de Casos de Uso | 2017-08-29 A | 2017-08-30 A | 0% → 100% | 1.75d → none |
| 49 | Verificar Actualización de ECUs | 2017-08-31 A | 2017-08-31 A | 0% → 100% | 0.94d → none |
| 50 | Validar Especificación de Casos de Uso | 2017-08-31 A | 2017-08-31 A | 0% → 100% | 0.94d → none |
| 51 | **Elaborar Especificación de Requisitos** |  | 2017-08-31 A | 21% → 100% | 0d → none |
| 53 | Elaborar Documento de SRS |  | 2017-08-26 A | 42% → 100% | 3d → none |
| 55 | Actualizar Documento SRS | 2017-08-29 A | 2017-08-30 A | 0% → 100% | 0.81d → none |
| 56 | Verificar Actualización de Documento SRS | 2017-08-31 A | 2017-08-31 A | 0% → 100% | 0d → none |
| 57 | Validar Documento de SRS | 2017-08-31 A | 2017-08-31 A | 0% → 100% | 0d → none |
| 58 | **Arquitectura y Diseño Detallado de Software** | 2017-08-31 A |  | 0% → 50% |  |
| 59 | Elaborar Registro de Trazabilidad | 2017-08-31 A |  | 0% → 50% |  |
