# Project v0.5

How a schedule from MS Project changed from version to version. A marks actual dates.

## Version 1 (saved 2017-09-30, file Project v0.6.mpp)

Note of the change: ISW2 Final project

| ID | WBS | Task | Duration | Start | Finish | Predecessors | Complete | Total float | Constraint |
| --- | --- | --- | --- | --- | --- | --- | --- | --- | --- |
| 1 | 1 | **Sistema de Gestión de Vehículos Pesados** | 41d? | 2017-08-02 A | 2017-09-25 |  | 75% | 0d |  |
| 2 | 1.1 | **Gestión de Proyecto** | 41d? | 2017-08-02 A | 2017-09-25 |  | 83% | 0d |  |
| 3 | 1.1.1 | **Planeación del Proyecto** | 38d | 2017-08-02 A | 2017-09-20 A |  | 100% |  |  |
| 4 | 1.1.1.1 | **Acta de Reunión 1** | 0d | 2017-08-02 A | 2017-08-02 A |  | 100% |  |  |
| 5 |  | Evaluar los contactos y selección de empresa | 0d | 2017-08-02 A | 2017-08-02 A |  | 100% |  |  |
| 6 |  | Asignar Roles del Equipo de Trabajo | 0d | 2017-08-02 A | 2017-08-02 A | 5 | 100% |  |  |
| 7 | 1.1.1.2 | **Acta de Reunión 2** | 0d | 2017-08-03 A | 2017-08-03 A |  | 100% |  |  |
| 8 |  | Primera Reunión con el cliente | 0d | 2017-08-03 A | 2017-08-03 A | 4 | 100% |  | start no earlier than 2017-08-03 |
| 9 |  | Analizar el proceso de negocio | 0d | 2017-08-03 A | 2017-08-03 A | 8 | 100% |  |  |
| 10 |  | Seleccionar y analizar proceso crítico | 0d | 2017-08-03 A | 2017-08-03 A | 9 | 100% |  |  |
| 11 | 1.1.1.3 | **Acta de Reunión 3** | 0d | 2017-08-05 A | 2017-08-05 A |  | 100% |  |  |
| 12 |  | Crear Repositorio y Backup del Repositorio del Proyecto | 0d | 2017-08-05 A | 2017-08-05 A | 7 | 100% |  | start no earlier than 2017-08-05 |
| 13 |  | Elaborar documento del Repositorio del Proyecto | 0d | 2017-08-05 A | 2017-08-05 A | 12 | 100% |  | start no earlier than 2017-08-05 |
| 14 |  | Verificar documento del Repositorio del Proyecto | 0d | 2017-08-05 A | 2017-08-05 A | 13 | 100% |  | start no earlier than 2017-08-05 |
| 15 |  | Definir Alcance del Proyecto | 0d | 2017-08-05 A | 2017-08-05 A | 14 | 100% |  |  |
| 16 |  | Estructurar Ms Project | 0d | 2017-08-06 A | 2017-08-06 A | 7 | 100% |  | start no earlier than 2017-08-06 |
| 17 | 1.1.1.5 | **Enunciado de Trabajo** | 13d | 2017-08-07 A | 2017-08-23 A |  | 100% |  |  |
| 18 |  | Elaborar Enunciado de Trabajo | 2d | 2017-08-07 A | 2017-08-08 A | 7, 16 | 100% |  | start no earlier than 2017-08-07 |
| 19 |  | Verificar Enunciado de Trabajo | 1d | 2017-08-09 A | 2017-08-09 A | 18 | 100% |  | start no earlier than 2017-08-09 |
| 20 |  | Actualizar Enunciado de Trabajo | 2d | 2017-08-16 A | 2017-08-17 A | 19 | 100% |  | start no earlier than 2017-08-16 |
| 21 |  | Verificar Actualización de Enunciado de Trabajo | 0d | 2017-08-23 A | 2017-08-23 A | 20 | 100% |  |  |
| 22 | 1.1.1.6 | **Acta de Reunion 4** | 0d | 2017-08-18 A | 2017-08-18 A |  | 100% |  |  |
| 23 |  | Asignar tareas según roles | 0d | 2017-08-18 A | 2017-08-18 A | 16 | 100% |  | start no earlier than 2017-08-18 |
| 24 |  | Elaborar el modelo de caso de uso | 0d | 2017-08-18 A | 2017-08-18 A | 17 | 100% |  | start no earlier than 2017-08-18 |
| 25 |  | Verificación y actualización del Ms Project | 0d | 2017-08-18 A | 2017-08-18 A | 11 | 100% |  | start no earlier than 2017-08-18 |
| 26 |  | Verificar Enunciado de Trabajo | 0d | 2017-08-18 A | 2017-08-18 A | 11 | 100% |  | start no earlier than 2017-08-18 |
| 27 | 1.1.1.7 | **Acta de Reunion 5** | 0d | 2017-08-31 A | 2017-08-31 A |  | 100% |  |  |
| 28 |  | Validar enunciado de trabajo | 0d | 2017-08-31 A | 2017-08-31 A | 17 | 100% |  | start no earlier than 2017-08-31 |
| 29 |  | Validar plan de proyecto | 0d | 2017-08-31 A | 2017-08-31 A | 37 | 100% |  | start no earlier than 2017-08-31 |
| 30 | 1.1.1.8 | **Acta de Reunion 6** | 0d | 2017-09-01 A | 2017-09-01 A |  | 100% |  |  |
| 31 |  | Asignar Tareas | 0d | 2017-09-01 A | 2017-09-01 A | 27 | 100% |  | start no earlier than 2017-09-01 |
| 32 |  | Actualizar Documentos | 0d | 2017-09-01 A | 2017-09-01 A | 31 | 100% |  |  |
| 33 | 1.1.1.9 | **Acta de Reunion 7** | 0d | 2017-09-20 A | 2017-09-20 A |  | 100% |  |  |
| 34 |  | Validar Documento de Arquitectura del Software | 0d | 2017-09-20 A | 2017-09-20 A | 89 | 100% |  | start no earlier than 2017-09-20 |
| 35 |  | Validar Documento de Diseño Detallado del Software | 0d | 2017-09-20 A | 2017-09-20 A | 83 | 100% |  | start no earlier than 2017-09-20 |
| 36 | 1.1.2 | **Ejecución del Plan de Proyecto** | 24.5d | 2017-08-21 A | 2017-09-22 A |  | 100% |  |  |
| 37 | 1.1.2.1 | **Plan de Proyecto** | 24.5d | 2017-08-21 A | 2017-09-22 A |  | 100% |  |  |
| 38 |  | Elaborar Plan de Proyecto | 4d | 2017-08-21 A | 2017-08-23 A | 17 | 100% |  | finish no earlier than 2017-08-23 |
| 39 |  | Verificar Plan de Proyecto | 0d | 2017-08-25 A | 2017-08-25 A | 38 | 100% |  | finish no earlier than 2017-08-25 |
| 40 |  | Actualizar Plan de Proyecto | 1d | 2017-09-22 A | 2017-09-22 A | 39 | 100% |  |  |
| 41 |  | Validar Plan de Proyecto y Enunciado de Trabajo | 0d | 2017-08-31 A | 2017-08-31 A | 21, 39 | 100% |  | start no earlier than 2017-08-31 |
| 42 | 1.1.4 | **Evaluación y Control del Proyecto** | 22d | 2017-08-24 A | 2017-09-25 A |  | 100% |  |  |
| 43 |  | Elaborar Documento Reporte de Avances | 0d | 2017-08-24 A | 2017-08-24 A |  | 100% |  | start no earlier than 2017-08-24 |
| 44 |  | Actualizar Documento Reporte de Avances | 0d | 2017-09-25 A | 2017-09-25 A |  | 100% |  | start no earlier than 2017-09-25 |
| 45 | 1.1.5 | **Cierre del Proyecto** | 1d? | 2017-08-02 | 2017-08-02 |  |  | 40d |  |
| 46 |  | Elaborar Manual de Usuario | 1d? | 2017-08-02 | 2017-08-02 |  |  | 40d |  |
| 47 |  | Entrega de Productos | 1d? | 2017-08-02 | 2017-08-02 |  |  | 40d |  |
| 48 | 1.2 | **Implementacion de Software** | 40.38d? | 2017-08-02 A | 2017-09-22 |  | 72% | 0.62d |  |
| 49 | 1.2.1 | **Inicio de Implementación de Software** | 0d | 2017-08-25 A | 2017-08-25 A |  | 100% |  |  |
| 50 |  | Revisar Plan de Proyecto | 0d | 2017-08-25 A | 2017-08-25 A | 37 | 100% |  | start no earlier than 2017-08-24 |
| 51 |  | Asignar Roles de acuerdo al Plan de Proyecto | 0d | 2017-08-25 A | 2017-08-25 A | 50 | 100% |  | start no earlier than 2017-08-25 |
| 52 | 1.2.2 | **Análisis de Requisitos de Software** | 15d | 2017-08-19 A | 2017-09-08 A |  | 100% |  |  |
| 53 | 1.2.2.1 | **Modelo de Casos de Uso** | 1d | 2017-08-19 A | 2017-08-20 A |  | 100% |  |  |
| 54 |  | Diseñar y Estructurar el Modelo de Casos de Uso | 1d | 2017-08-19 A | 2017-08-19 A | 17, 37 | 100% |  | finish no earlier than 2017-08-23 |
| 55 |  | Actualizar el Modelo de Casos de Uso | 1d | 2017-08-19 A | 2017-08-20 A | 54 | 100% |  |  |
| 56 | 1.2.2.2 | **Documento Especificación de Casos de Uso** | 11d | 2017-08-24 A | 2017-09-08 A |  | 100% |  |  |
| 57 |  | Elaborar la Especificación de Casos de Uso | 3d | 2017-08-24 A | 2017-08-25 A | 54, 65 | 100% |  |  |
| 58 |  | Verificar Especificación de Casos de Uso | 0d | 2017-08-25 A | 2017-08-25 A | 57 | 100% |  | start no earlier than 2017-08-25 |
| 59 |  | Actualizar Especificación de Casos de Uso | 2d | 2017-08-29 A | 2017-08-30 A | 58 | 100% |  | start no earlier than 2017-08-29 |
| 60 |  | Verificar Actualización de ECUs | 0d | 2017-08-31 A | 2017-08-31 A | 59 | 100% |  | start no earlier than 2017-08-31 |
| 61 |  | Validar Especificación de Casos de Uso | 0d | 2017-08-31 A | 2017-08-31 A | 60 | 100% |  | start no earlier than 2017-08-02 |
| 62 |  | Actualizar la Especificacion de Casos de Uso | 2d | 2017-09-01 A | 2017-09-02 A | 61 | 100% |  |  |
| 63 |  | Validar Especificación de Casos de Uso | 0d | 2017-09-08 A | 2017-09-08 A | 62 | 100% |  | start no earlier than 2017-09-08 |
| 64 | 1.2.2.3 | **Especificacion de Requisitos del Software** | 5d | 2017-08-24 A | 2017-08-31 A |  | 100% |  |  |
| 65 |  | Elaborar Priorización de Casos de Uso | 0d | 2017-08-24 A | 2017-08-24 A | 54 | 100% |  |  |
| 66 |  | Elaborar Documento de SRS | 2d | 2017-08-24 A | 2017-08-26 A | 57 | 100% |  |  |
| 67 |  | Verificar Documento de SRS | 0d | 2017-08-25 A | 2017-08-25 A | 66 | 100% |  |  |
| 68 |  | Actualizar Documento SRS | 2d | 2017-08-29 A | 2017-08-30 A | 67 | 100% |  | start no earlier than 2017-08-29 |
| 69 |  | Verificar Actualización de Documento SRS | 0d | 2017-08-31 A | 2017-08-31 A | 68 | 100% |  | start no earlier than 2017-08-31 |
| 70 |  | Validar Documento de SRS | 0d | 2017-08-31 A | 2017-08-31 A | 69 | 100% |  |  |

| ID | WBS | Task | Duration | Start | Finish | Predecessors | Complete | Total float | Constraint |
| --- | --- | --- | --- | --- | --- | --- | --- | --- | --- |
| 71 | 1.2.3 | **Arquitectura y Diseño Detallado de Software** | 40.38d? | 2017-08-02 A | 2017-09-22 |  | 95% | 0.62d |  |
| 72 |  | Elaborar Registro de Trazabilidad | 1d | 2017-08-31 A | 2017-08-31 A | 64 | 100% |  | start no earlier than 2017-08-25 |
| 73 |  | Actualizar Registro de Trazabilidad | 1d | 2017-09-12 A | 2017-09-12 A | 72 | 100% |  |  |
| 74 |  | Actualizar Registro de Trazabilidad | 1d | 2017-09-20 A | 2017-09-20 A | 73 | 100% |  |  |
| 75 |  | Actualizar Registro de Trazabilidad | 1d? | 2017-08-02 | 2017-08-02 |  |  | 40d |  |
| 76 | 1.2.3.5 | **Diseño de Casos de Uso** | 6.38d | 2017-09-14 A | 2017-09-22 A |  | 100% |  |  |
| 77 |  | Analizar y Diseñar el Diagrama de Secuencia | 5d | 2017-09-14 A | 2017-09-22 A | 78 | 100% |  |  |
| 78 | 1.2.3.6 | **Documento Diseño Detallado del Software** | 9d | 2017-09-07 A | 2017-09-20 A |  | 100% |  |  |
| 79 |  | Elaborar Documento Diseño Detallado del Software | 3d | 2017-09-07 A | 2017-09-09 A | 56 | 100% |  |  |
| 80 |  | Verificar Documento Diseño detallado del Software | 0d | 2017-09-15 A | 2017-09-15 A | 79 | 100% |  | start no earlier than 2017-09-15 |
| 81 |  | Actualizar Documento Diseño Detallado del Software | 2d | 2017-09-16 A | 2017-09-17 A | 80 | 100% |  | start no earlier than 2017-08-02 |
| 82 |  | Verificar Documento Diseño detallado del Software | 0d | 2017-09-19 A | 2017-09-19 A | 81 | 100% |  | start no earlier than 2017-08-19 |
| 83 |  | Validar Documento Diseño detallado del Software | 0d | 2017-09-20 A | 2017-09-20 A | 82 | 100% |  | start no earlier than 2017-09-20 |
| 84 | 1.2.3.7 | **Documento de Arquitectura del Software** | 26d | 2017-08-16 A | 2017-09-20 A |  | 100% |  |  |
| 85 |  | Elaborar Documento de Arquitectura del Software | 3d | 2017-09-07 A | 2017-09-09 A | 56 | 100% |  |  |
| 86 |  | Verificar Documento de Arquitectura del Software | 0d | 2017-09-15 A | 2017-09-15 A | 85 | 100% |  | start no earlier than 2017-09-15 |
| 87 |  | Actualizar Documento de Arquitectura del Software | 2d | 2017-08-16 A | 2017-09-15 A | 86 | 100% |  |  |
| 88 |  | Verificar Documento de Arquitectura del Software | 0d | 2017-09-19 A | 2017-09-19 A | 87 | 100% |  | start no earlier than 2017-09-19 |
| 89 |  | Validar Documento de Arquitectura del Software | 0d | 2017-09-20 A | 2017-09-20 A | 88 | 100% |  | start no earlier than 2017-09-20 |
| 90 | 1.2.4 | **Construcción de Software** | 1d? | 2017-08-02 | 2017-08-02 |  |  | 40d |  |
| 91 |  | Elaborar Base de datos | 1d? | 2017-08-02 | 2017-08-02 |  |  | 40d |  |
| 92 |  | Comenzar elaboracion del Softwarte | 1d? | 2017-08-02 | 2017-08-02 |  |  | 40d |  |
| 93 |  | Actualizar Software | 1d? | 2017-08-02 | 2017-08-02 |  |  | 40d |  |
| 94 | 1.2.5 | **Integración y Pruebas de Software** | 1d? | 2017-08-02 | 2017-08-02 |  |  | 40d |  |
| 95 |  | Elaborar Casos de Prueba | 1d? | 2017-08-02 | 2017-08-02 |  |  | 40d |  |
| 96 |  | Smoke testing en el Software | 1d? | 2017-08-02 | 2017-08-02 |  |  | 40d |  |
| 97 |  | Volume testing en el Software | 1d? | 2017-08-02 | 2017-08-02 |  |  | 40d |  |
| 98 |  | Actualizar el Software por corecciones | 1d? | 2017-08-02 | 2017-08-02 |  |  | 40d |  |
| 99 |  | Reggression testing en el Software | 1d? | 2017-08-02 | 2017-08-02 |  |  | 40d |  |
| 100 |  | Integration testing en el Software | 1d? | 2017-08-02 | 2017-08-02 |  |  | 40d |  |
| 101 | 1.2.6 | **Entrega de Productos** | 1d? | 2017-08-02 | 2017-08-02 |  |  | 40d |  |
| 102 |  | Elaborar manual de Usuario | 1d? | 2017-08-02 | 2017-08-02 |  |  | 40d |  |
| 103 |  | Entrega de Productos | 1d? | 2017-08-02 | 2017-08-02 |  |  | 40d |  |

## Version 2 (saved 2017-10-29, file Project v0.7.mpp)

Note of the change: ISW2 Final project

Last finish 2017-09-25 → 2017-11-08 (+44d). Complete tasks 61 → 62.

Added:

| ID | Task | Duration | Start | Finish | Predecessors | Constraint | Resources |
| --- | --- | --- | --- | --- | --- | --- | --- |
| 36 | **Acta de Reunion 8** | 0d | 2017-11-08 A | 2017-11-08 A |  |  |  |
| 47 | Actualizar Documento Reporte de Avances | 0d | 2017-10-25 | 2017-10-25 | 46 | start no earlier than 2017-10-25 | GESTOR DE PROYECTO |
| 49 | Elaborar acta de aceptacion | 0d | 2017-11-08 | 2017-11-08 | 36 | start no earlier than 2017-11-08 | GESTOR DE PROYECTO |
| 50 | **Elaborar manuales** | 1d? | 2017-08-02 | 2017-08-02 |  |  |  |
| 51 | Elaborar manual de Usuario | 1d? | 2017-08-02 | 2017-08-02 |  |  |  |
| 52 | Elaborar Manual de operación | 1d? | 2017-08-02 | 2017-08-02 |  |  |  |
| 53 | Elaborar Manual de mantenimiento | 1d? | 2017-08-02 | 2017-08-02 |  |  |  |
| 54 | Elaborar Plan de capacitacion | 1d? | 2017-08-02 | 2017-08-02 |  |  |  |
| 55 | Entrega de Productos | 0d | 2017-11-08 | 2017-11-08 | 36 |  | GESTOR DE PROYECTO |
| 99 | Elaborar Modelo conceptual | 1d? | 2017-08-02 | 2017-08-02 |  |  |  |
| 100 | Elaborar Modelo logico | 1d? | 2017-08-02 | 2017-08-02 |  |  |  |
| 101 | Elaborar Modelo fisico | 1d? | 2017-08-02 | 2017-08-02 |  |  |  |
| 107 | EDCP-Registrar Salida de Vehiculo | 0d | 2017-10-22 | 2017-10-22 | 64 | start no earlier than 2017-10-22 | TESTER |
| 108 | EDCP-Registrar Entrada de Vehiculo | 0d | 2017-10-22 | 2017-10-22 | 64 | start no earlier than 2017-10-22 | TESTER |
| 109 | EDCP-Registrar Revisiones Tecnicas realizadas a Vehiculos | 0d | 2017-10-29 | 2017-10-29 | 64 | start no earlier than 2017-10-29 | TESTER |
| 110 | EDCP-Registrar Multa de Vehiculo | 0d | 2017-10-29 | 2017-10-29 | 64 | start no earlier than 2017-10-29 | TESTER |
| 111 | EDCP-Aprobar Revision Tecnica de Vehiculo | 0d | 2017-10-29 | 2017-10-29 | 64 | start no earlier than 2017-10-29 | TESTER |
| 113 | Pruebas unitarias | 1d? | 2017-08-02 | 2017-08-02 |  |  |  |
| 116 | Pruebas integrales | 1d? | 2017-08-02 | 2017-08-02 |  |  |  |
| 118 | Elaborar acta de aceptacion | 0d | 2017-11-08 | 2017-11-08 | 36 | start no earlier than 2017-11-08 | GESTOR DE PROYECTO |
| 119 | **Elaborar manuales** | 1d? | 2017-08-02 | 2017-08-02 |  |  |  |
| 121 | Elaborar Manual de operación | 1d? | 2017-08-02 | 2017-08-02 |  |  |  |
| 122 | Elaborar Manual de mantenimiento | 1d? | 2017-08-02 | 2017-08-02 |  |  |  |
| 123 | Elaborar Plan de capacitacion | 1d? | 2017-08-02 | 2017-08-02 |  |  |  |

Removed: 46 Elaborar Manual de Usuario; 75 Actualizar Registro de Trazabilidad; 97 Volume testing en el Software

Changed:

| ID | Task | Start | Finish | Duration | Complete | Total float | Predecessors | Other |
| --- | --- | --- | --- | --- | --- | --- | --- | --- |
| 1 | **Sistema de Gestión de Vehículos Pesados** |  | 2017-09-25 → 2017-11-08 (+44d) | 41d? → 75d? | 75% → 69% |  |  |  |
| 2 | **Gestión de Proyecto** |  | 2017-09-25 → 2017-11-08 (+44d) | 41d? → 75d? | 83% → 71% |  |  |  |
| 3 | **Planeación del Proyecto** |  | 2017-09-20 A → 2017-11-08 A (+49d) | 38d → 75d |  |  |  |  |
| 34 | Validar Documento de Arquitectura del Software |  |  |  |  |  |  | resources CLIENTE; GESTOR DE PROYECTO → CLIENTE; GESTOR DE PROYECTO; ANALISTA |
| 35 | Validar Documento de Diseño Detallado del Software |  |  |  |  |  |  | resources CLIENTE; GESTOR DE PROYECTO → CLIENTE; GESTOR DE PROYECTO; ANALISTA |
| 37 | Entrega de Productos | 2017-08-02 → 2017-11-08 A (+98d) | 2017-08-02 → 2017-11-08 A (+98d) | 1d? → 0d | 0% → 100% | 40d → none | none → 33 | constraint none → start no earlier than 2017-11-08; resources none → CLIENTE; GESTOR DE PROYECTO |
| 44 | **Evaluación y Control del Proyecto** |  | 2017-09-25 A → 2017-10-25 (+30d) | 22d → 45d | 100% → 0% | none → 11d |  |  |
| 46 | Actualizar Documento Reporte de Avances |  |  |  |  |  | none → 45 |  |
| 48 | **Cierre del Proyecto** |  | 2017-08-02 → 2017-11-08 (+98d) | 1d? → 75d? |  | 40d → 0d |  |  |
| 56 | **Implementacion de Software** |  | 2017-09-22 → 2017-11-08 (+47d) | 40.38d? → 75d? | 72% → 69% | 0.62d → 0d |  |  |
| 79 | **Arquitectura y Diseño Detallado de Software** | 2017-08-02 A → 2017-08-16 A (+14d) | 2017-09-22 A | 40.38d? → 28.38d | 95% → 100% | 0.62d → none |  |  |
| 104 | **Integración y Pruebas de Software** |  | 2017-08-02 → 2017-10-29 (+88d) | 1d? → 67d? |  | 40d → 8d |  |  |
| 105 | **Elaborar Casos de Prueba** | 2017-08-02 → 2017-10-22 (+81d) | 2017-08-02 → 2017-10-29 (+88d) | 1d? → 6d |  | 40d → 8d |  |  |
| 106 | EDCP-Generar Revisiones Tecnicas de Vehiculos | 2017-08-02 → 2017-10-22 (+81d) | 2017-08-02 → 2017-10-22 (+81d) | 1d? → 0d |  | 40d → 14d | none → 64 | was named Integration testing en el Software; constraint none → start no earlier than 2017-10-22; resources none → TESTER |
| 112 | Smoke test en el Software |  |  |  |  | 40d → 74d |  | was named Smoke testing en el Software |
| 115 | Reggression test en el Software |  |  |  |  | 40d → 74d |  | was named Reggression testing en el Software |
| 117 | **Entrega de Productos** |  | 2017-08-02 → 2017-11-08 (+98d) | 1d? → 75d? |  | 40d → 0d |  |  |
| 124 | Entrega de Productos | 2017-08-02 → 2017-11-08 (+98d) | 2017-08-02 → 2017-11-08 (+98d) | 1d? → 0d |  | 40d → 0d | none → 36 | constraint none → start no earlier than 2017-11-08; resources none → GESTOR DE PROYECTO |

## Version 3 (saved 2017-11-08, file Project v0.8.mpp)

Note of the change: ISW2 Final project

Last finish stays 2017-11-08. Complete tasks 62 → 91.

Changed:

| ID | Task | Start | Finish | Duration | Complete | Total float | Predecessors | Other |
| --- | --- | --- | --- | --- | --- | --- | --- | --- |
| 1 | **Sistema de Gestión de Vehículos Pesados** |  | 2017-11-08 A | 75d? → 76d | 69% → 100% | 0d → none |  |  |
| 2 | **Gestión de Proyecto** |  | 2017-11-08 A | 75d? → 76d | 71% → 100% | 0d → none |  |  |
| 3 | **Planeación del Proyecto** |  |  | 75d → 76d |  |  |  |  |
| 44 | **Evaluación y Control del Proyecto** |  | 2017-10-25 A | 45d → 46d | 0% → 100% | 11d → none |  |  |
| 47 | Actualizar Documento Reporte de Avances | 2017-10-25 A | 2017-10-25 A |  | 0% → 100% | 11d → none |  |  |
| 48 | **Cierre del Proyecto** | 2017-08-02 → 2017-11-07 A (+97d) | 2017-11-08 A | 75d? → 1d | 0% → 100% | 0d → none |  |  |
| 49 | Elaborar acta de aceptacion | 2017-11-08 A | 2017-11-08 A |  | 0% → 100% | 0d → none |  |  |
| 50 | **Elaborar manuales** | 2017-08-02 → 2017-11-07 A (+97d) | 2017-08-02 → 2017-11-07 A (+97d) | 1d? → 1d | 0% → 100% | 74d → none |  |  |
| 51 | Elaborar manual de Usuario | 2017-08-02 → 2017-11-07 A (+97d) | 2017-08-02 → 2017-11-07 A (+97d) | 1d? → 1d | 0% → 100% | 74d → none |  | resources none → ANALISTA; PROGRAMADOR |
| 52 | Elaborar Manual de operación | 2017-08-02 → 2017-11-07 A (+97d) | 2017-08-02 → 2017-11-07 A (+97d) | 1d? → 1d | 0% → 100% | 74d → none |  | resources none → ANALISTA; PROGRAMADOR |
| 53 | Elaborar Manual de mantenimiento | 2017-08-02 → 2017-11-07 A (+97d) | 2017-08-02 → 2017-11-07 A (+97d) | 1d? → 1d | 0% → 100% | 74d → none |  | resources none → ANALISTA; PROGRAMADOR |
| 54 | Elaborar Plan de capacitacion | 2017-08-02 → 2017-11-07 A (+97d) | 2017-08-02 → 2017-11-07 A (+97d) | 1d? → 1d | 0% → 100% | 74d → none |  | resources none → ANALISTA; GESTOR DE PROYECTO |
| 55 | Entrega de Productos | 2017-11-08 A | 2017-11-08 A |  | 0% → 100% | 0d → none |  |  |
| 56 | **Implementacion de Software** | 2017-08-02 A → 2017-08-04 A (+2d) | 2017-11-08 A | 75d? → 74d | 69% → 100% | 0d → none |  |  |
| 97 | **Construcción de Software** | 2017-08-02 → 2017-10-04 A (+63d) | 2017-08-02 → 2017-10-21 A (+80d) | 1d? → 14d | 0% → 100% | 74d → none |  |  |
| 98 | **Elaborar Base de datos** | 2017-08-02 → 2017-10-04 A (+63d) | 2017-08-02 → 2017-10-12 A (+71d) | 1d? → 7d | 0% → 100% | 74d → none |  |  |
| 99 | Elaborar Modelo conceptual | 2017-08-02 → 2017-10-04 A (+63d) | 2017-08-02 → 2017-10-06 A (+65d) | 1d? → 3d | 0% → 100% | 74d → none | none → 79 | constraint none → start no earlier than 2017-10-04; resources none → PROGRAMADOR |
| 100 | Elaborar Modelo logico | 2017-08-02 → 2017-10-09 A (+68d) | 2017-08-02 → 2017-10-10 A (+69d) | 1d? → 2d | 0% → 100% | 74d → none | none → 99 | resources none → PROGRAMADOR |
| 101 | Elaborar Modelo fisico | 2017-08-02 → 2017-10-11 A (+70d) | 2017-08-02 → 2017-10-12 A (+71d) | 1d? → 2d | 0% → 100% | 74d → none | none → 100 | resources none → PROGRAMADOR |
| 102 | Comenzar elaboracion del Softwarte | 2017-08-02 → 2017-10-13 A (+72d) | 2017-08-02 → 2017-10-18 A (+77d) | 1d? → 4d | 0% → 100% | 74d → none | none → 98 | resources none → PROGRAMADOR |
| 103 | Actualizar Software | 2017-08-02 → 2017-10-19 A (+78d) | 2017-08-02 → 2017-10-21 A (+80d) | 1d? → 3d | 0% → 100% | 74d → none | none → 102 | resources none → PROGRAMADOR |
| 104 | **Integración y Pruebas de Software** | 2017-08-02 → 2017-08-04 A (+2d) | 2017-10-29 → 2017-11-07 A (+9d) | 67d? → 74d | 0% → 100% | 8d → none |  |  |
| 105 | **Elaborar Casos de Prueba** | 2017-10-22 A | 2017-10-29 A |  | 0% → 100% | 8d → none |  |  |
| 106 | EDCP-Generar Revisiones Tecnicas de Vehiculos | 2017-10-22 A | 2017-10-22 A |  | 0% → 100% | 14d → none |  |  |
| 107 | EDCP-Registrar Salida de Vehiculo | 2017-10-22 A | 2017-10-22 A |  | 0% → 100% | 14d → none |  |  |
| 108 | EDCP-Registrar Entrada de Vehiculo | 2017-10-22 A | 2017-10-22 A |  | 0% → 100% | 14d → none |  |  |
| 109 | EDCP-Registrar Revisiones Tecnicas realizadas a Vehiculos | 2017-10-29 A | 2017-10-29 A |  | 0% → 100% | 8d → none |  |  |
| 110 | EDCP-Registrar Multa de Vehiculo | 2017-10-29 A | 2017-10-29 A |  | 0% → 100% | 8d → none |  |  |
| 111 | EDCP-Aprobar Revision Tecnica de Vehiculo | 2017-10-29 A | 2017-10-29 A |  | 0% → 100% | 8d → none |  |  |
| 112 | Smoke test en el Software | 2017-08-02 → 2017-11-01 A (+91d) | 2017-08-02 → 2017-11-01 A (+91d) | 1d? → 1d | 0% → 100% | 74d → none | none → 114 | constraint none → start no earlier than 2017-11-01; resources none → TESTER |
| 113 | Pruebas unitarias | 2017-08-02 → 2017-10-21 A (+80d) | 2017-08-02 → 2017-10-27 A (+86d) | 1d? → 6d | 0% → 100% | 74d → none | none → 97 | constraint none → finish no earlier than 2017-10-27; resources none → TESTER; PROGRAMADOR |
| 114 | Actualizar el Software por corecciones | 2017-08-02 → 2017-10-31 A (+90d) | 2017-08-02 → 2017-11-01 A (+91d) | 1d? → 2d | 0% → 100% | 74d → none | none → 113 | constraint none → start no earlier than 2017-10-31; resources none → PROGRAMADOR |
| 115 | Reggression test en el Software | 2017-08-02 → 2017-08-04 A (+2d) | 2017-08-02 → 2017-08-05 A (+3d) | 1d? → 2d | 0% → 100% | 74d → none | none → 112 | constraint none → start no earlier than 2017-08-04; resources none → TESTER |
| 116 | Pruebas integrales | 2017-08-02 → 2017-11-07 A (+97d) | 2017-08-02 → 2017-11-07 A (+97d) | 1d? → 1d | 0% → 100% | 74d → none | none → 115 | constraint none → start no earlier than 2017-11-07; resources none → TESTER |
| 117 | **Entrega de Productos** | 2017-08-02 → 2017-11-07 A (+97d) | 2017-11-08 A | 75d? → 1d | 0% → 100% | 0d → none |  |  |
| 118 | Elaborar acta de aceptacion | 2017-11-08 A | 2017-11-08 A |  | 0% → 100% | 0d → none |  |  |
| 119 | **Elaborar manuales** | 2017-08-02 → 2017-11-07 A (+97d) | 2017-08-02 → 2017-11-07 A (+97d) | 1d? → 1d | 0% → 100% | 74d → none |  |  |
| 120 | Elaborar manual de Usuario | 2017-08-02 → 2017-11-07 A (+97d) | 2017-08-02 → 2017-11-07 A (+97d) | 1d? → 1d | 0% → 100% | 74d → none | none → 51 | resources none → ANALISTA; PROGRAMADOR |
| 121 | Elaborar Manual de operación | 2017-08-02 → 2017-11-07 A (+97d) | 2017-08-02 → 2017-11-07 A (+97d) | 1d? → 1d | 0% → 100% | 74d → none | none → 52 | resources none → ANALISTA; PROGRAMADOR |
| 122 | Elaborar Manual de mantenimiento | 2017-08-02 → 2017-11-07 A (+97d) | 2017-08-02 → 2017-11-07 A (+97d) | 1d? → 1d | 0% → 100% | 74d → none | none → 53 | resources none → ANALISTA; PROGRAMADOR |
| 123 | Elaborar Plan de capacitacion | 2017-08-02 → 2017-11-07 A (+97d) | 2017-08-02 → 2017-11-07 A (+97d) | 1d? → 1d | 0% → 100% | 74d → none | none → 54 | resources none → ANALISTA; GESTOR DE PROYECTO |
| 124 | Entrega de Productos | 2017-11-08 A | 2017-11-08 A |  | 0% → 100% | 0d → none |  |  |
